# Proyecto_Inspector_Digital

Schedule from MS Project XML, 2021-03-01 to 2021-09-23.

## Calendars

- Estandar: Mon-Fri 08:00-12:00, 13:00-17:00; Sat-Sun off.

## Resources

| Resource | Rate |
| --- | --- |
| No Asignado |  |
| Project Manager | 812.5 |
| Scrum Master | 569.94 |
| Arquitecto de SW | 616.67 |
| Desarrolladora Sr | 529.17 |
| Desarrollador Jr 1 | 439.29 |
| Desarrollador Jr 2 | 439.29 |
| Analista Tester | 426.49 |
| Especialista BI | 608.93 |
| Analista Funcional | 505.95 |
| Analista UX | 505.95 |

## Schedule

| ID | WBS | Task | Type | Duration | Start | Finish | Predecessors | Resources |
| --- | --- | --- | --- | --- | --- | --- | --- | --- |
| 1 | 1 | **Proyecto_Inspector_Digital** |  | 148.5d? | 2021-03-01 | 2021-09-23 |  |  |
| 2 | 1.1 | Inicio de Proyecto | milestone | 0d | 2021-03-01 | 2021-03-01 |  | Project Manager; Scrum Master; Arquitecto de SW; Desarrolladora Sr; Desarrollador Jr 1; Desarrollador Jr 2; Analista Tester; Especialista BI |
| 3 | 1.2 | **Análisis de requerimientos** |  | 20.5d | 2021-03-01 | 2021-03-29 |  |  |
| 4 | 1.2.1 | Definición de límites y alcance |  | 3d | 2021-03-01 | 2021-03-03 | 2 | Project Manager |
| 5 | 1.2.2 | Obtención de requisitos funcionales |  | 5d | 2021-03-04 | 2021-03-10 | 4 | Analista Funcional |
| 6 | 1.2.3 | Definición y especificación de requerimientos |  | 5d | 2021-03-11 | 2021-03-17 | 5 | Analista Funcional |
| 7 | 1.2.4 | Clasificación de requerimientos funcionales y no funcionales |  | 2.5d | 2021-03-18 | 2021-03-22 | 6 | Project Manager; Analista Funcional |
| 8 | 1.2.5 | Confección de User Stories |  | 5d | 2021-03-22 | 2021-03-29 | 7 | Analista Funcional |
| 9 | 1.3 | **Diseño** |  | 12d | 2021-03-29 | 2021-04-14 |  |  |
| 10 | 1.3.1 | Definición de arquitectura |  | 5d | 2021-03-29 | 2021-04-05 | 8 | Arquitecto de SW |
| 11 | 1.3.2 | Definición de modelos de componentes |  | 5d | 2021-04-05 | 2021-04-12 | 10 | Arquitecto de SW |
| 12 | 1.3.3 | Definición de hardware requerido |  | 2d | 2021-04-12 | 2021-04-14 | 11 | Arquitecto de SW |
| 13 | 1.3.4 | Realización de mock-ups de front end |  | 7d | 2021-04-05 | 2021-04-14 | 10 | Analista UX |
| 14 | 1.4 | **Adquisición de recursos** |  | 46d | 2021-03-01 | 2021-05-03 |  |  |
| 15 | 1.4.1 | Búsqueda de proveedores (celulares,netbooks, equipo de testing) |  | 3d | 2021-03-01 | 2021-03-03 | 2 | Project Manager |
| 16 | 1.4.2 | Análisis de proveedores |  | 3d | 2021-03-04 | 2021-03-08 | 15 | Project Manager |
| 17 | 1.4.3 | Licitación de proveedores |  | 10d | 2021-03-09 | 2021-03-22 | 16 | Project Manager |
| 18 | 1.4.4 | Realización de compras y contrataciones de servicios |  | 30d | 2021-03-23 | 2021-05-03 | 17 | Project Manager |
| 19 | 1.5 | **Desarrollo** |  | 48d? | 2021-04-14 | 2021-06-21 |  |  |
| 20 | 1.5.1 | **Sprint1** |  | 15d | 2021-04-14 | 2021-05-05 |  |  |
| 21 | 1.5.1.1 | **Módulo Token Validator** |  | 6d | 2021-04-14 | 2021-04-22 |  |  |
| 22 | 1.5.1.1.1 | Instalar librerías Google Authenticator |  | 1d | 2021-04-14 | 2021-04-15 | 13 | Desarrollador Jr 2 |
| 23 | 1.5.1.1.2 | Integrar Google Authenticator |  | 3d | 2021-04-15 | 2021-04-20 | 22 | Desarrolladora Sr |
| 24 | 1.5.1.1.3 | Documentación técnica módulo Token Validator |  | 2d | 2021-04-20 | 2021-04-22 | 23 | Desarrollador Jr 1 |

Notes:
- 2: Hito Comienzo del Proyecto

| ID | WBS | Task | Duration | Start | Finish | Predecessors | Resources |
| --- | --- | --- | --- | --- | --- | --- | --- |
| 25 | 1.5.1.2 | **Base de datos** | 14d | 2021-04-14 | 2021-05-04 |  |  |
| 26 | 1.5.1.2.1 | Definición de modelos | 3d | 2021-04-14 | 2021-04-19 | 13 | Arquitecto de SW |
| 27 | 1.5.1.2.2 | Crear base de datos | 3d | 2021-04-19 | 2021-04-22 | 26 | Arquitecto de SW |
| 28 | 1.5.1.2.3 | Crear tablas y relaciones | 3d | 2021-04-22 | 2021-04-27 | 27 | Desarrolladora Sr |
| 29 | 1.5.1.2.4 | Documentación técnica base de datos | 5d | 2021-04-27 | 2021-05-04 | 28 | Desarrollador Jr 1 |
| 30 | 1.5.1.3 | **Aplicación Inspector Digital MT (back end)** | 8d | 2021-04-22 | 2021-05-04 |  |  |
| 31 | 1.5.1.3.1 | Definición de contrato json a utilizar | 1d | 2021-04-22 | 2021-04-23 | 27 | Arquitecto de SW |
| 32 | 1.5.1.3.2 | Crear nuevo end point InspectorDigital | 1d | 2021-04-23 | 2021-04-26 | 31 | Desarrolladora Sr |
| 33 | 1.5.1.3.3 | Crear InspectorDigitalController, InspectorDigitalService e InspectorDigitalRepository | 2d | 2021-04-26 | 2021-04-28 | 32 | Desarrollador Jr 2 |
| 34 | 1.5.1.3.4 | Lógica para almacenar los datos recolectados | 2d | 2021-04-28 | 2021-04-30 | 33 | Desarrollador Jr 2 |
| 35 | 1.5.1.3.5 | Lógica para fiscalizar los datos recolectados | 2d | 2021-04-30 | 2021-05-04 | 34 | Desarrollador Jr 2 |
| 36 | 1.5.1.4 | **Aplicación Inspector Digital MT (front end)** | 8d | 2021-04-22 | 2021-05-04 |  |  |
| 37 | 1.5.1.4.1 | Crear InspectorDigital.module, service, component y css | 1d | 2021-04-22 | 2021-04-23 | 27 | Desarrolladora Sr |
| 38 | 1.5.1.4.2 | Crear InspectorDigital-api-client | 2d | 2021-04-23 | 2021-04-27 | 37 | Desarrollador Jr 1 |
| 39 | 1.5.1.4.3 | Crear vista y formulario | 3d | 2021-04-27 | 2021-04-30 | 38 | Analista UX |
| 40 | 1.5.1.4.4 | Lógica para validar datos ingresados | 2d | 2021-04-30 | 2021-05-04 | 39 | Desarrollador Jr 1 |
| 41 | 1.5.1.5 | Reunión Retrospectiva | 1d | 2021-05-04 | 2021-05-05 | 21, 29, 35, 40 | Scrum Master |
| 42 | 1.5.2 | **Sprint2** | 15d | 2021-05-05 | 2021-05-26 |  |  |
| 43 | 1.5.2.1 | **Módulo SyncModule (Inspector Digital MT)** | 14d | 2021-05-05 | 2021-05-25 |  |  |
| 44 | 1.5.2.1.1 | Crear SyncModuleSendController y SyncModuleSendService | 2d | 2021-05-05 | 2021-05-07 | 41 | Desarrollador Jr 1 |
| 45 | 1.5.2.1.2 | Lógica para crear request de sincronización | 2d | 2021-05-07 | 2021-05-11 | 44 | Desarrolladora Sr |
| 46 | 1.5.2.1.3 | Lógica para obtener datos almacenados localmente | 2d | 2021-05-11 | 2021-05-13 | 45 | Desarrolladora Sr |
| 47 | 1.5.2.1.4 | Lógica para encriptar datos | 2d | 2021-05-13 | 2021-05-17 | 46 | Desarrollador Jr 1 |
| 48 | 1.5.2.1.5 | Lógica para enviar datos al servidor | 2d | 2021-05-17 | 2021-05-19 | 47 | Desarrollador Jr 1 |
| 49 | 1.5.2.1.6 | Documentación técnica SyncModule (app) | 4d | 2021-05-19 | 2021-05-25 | 48 | Desarrollador Jr 1 |

| ID | WBS | Task | Duration | Start | Finish | Predecessors | Resources |
| --- | --- | --- | --- | --- | --- | --- | --- |
| 50 | 1.5.2.2 | **Módulo SyncModule (Servidor principal)** | 10d | 2021-05-05 | 2021-05-19 |  |  |
| 51 | 1.5.2.2.1 | Crear SyncModuleReceiveController y SyncModuleReceiveService | 2d | 2021-05-05 | 2021-05-07 | 41 | Desarrollador Jr 2 |
| 52 | 1.5.2.2.2 | Lógica para aceptar request de sincronización | 2d | 2021-05-07 | 2021-05-11 | 51 | Desarrolladora Sr |
| 53 | 1.5.2.2.3 | Lógica para almacenar datos en el servidor | 2d | 2021-05-11 | 2021-05-13 | 52 | Desarrollador Jr 2 |
| 54 | 1.5.2.2.4 | Documentación técnica SyncModule (servidor) | 4d | 2021-05-13 | 2021-05-19 | 53 | Desarrollador Jr 2 |
| 55 | 1.5.2.3 | Reunión Retrospectiva | 1d | 2021-05-25 | 2021-05-26 | 49, 54 | Scrum Master |
| 56 | 1.5.3 | **Sprint3** | 17d? | 2021-05-26 | 2021-06-18 |  |  |
| 57 | 1.5.3.1 | **Módulo ReportMng** | 15d? | 2021-05-26 | 2021-06-16 |  |  |
| 58 | 1.5.3.1.1 | Configurar fuente de datos | 2d | 2021-05-26 | 2021-05-28 | 55 | Especialista BI |
| 59 | 1.5.3.1.2 | Configurar servidor y base de datos origen | 2d | 2021-05-28 | 2021-06-01 | 58 | Especialista BI |
| 60 | 1.5.3.1.3 | Configurar servidor de informes destino | 3d | 2021-06-01 | 2021-06-04 | 59 | Especialista BI |
| 61 | 1.5.3.1.4 | Diseñar informes | 3d | 2021-06-04 | 2021-06-09 | 60 | Especialista BI |
| 62 | 1.5.3.1.5 | Documentación técnica ReportMng | 5d? | 2021-06-09 | 2021-06-16 | 61 | Especialista BI |
| 63 | 1.5.3.2 | **Integración a la aplicación web Ministerio de Trabajo** | 2d? | 2021-06-16 | 2021-06-18 |  |  |
| 64 | 1.5.3.2.1 | Agregar referencias y librerías de app Inspector Digital MT al mail | 1d? | 2021-06-16 | 2021-06-17 | 62 | Desarrollador Jr 2 |
| 65 | 1.5.3.2.2 | Documentación técnica de integración | 1d? | 2021-06-17 | 2021-06-18 | 64 | Desarrollador Jr 2 |
| 66 | 1.5.4 | Reunión Retrospectiva | 1d | 2021-06-18 | 2021-06-21 | 62, 65 | Scrum Master |
| 67 | 1.6 | **Testing** | 33d | 2021-06-21 | 2021-08-05 |  |  |
| 68 | 1.6.1 | Gestionar ambientes de prueba | 3d | 2021-06-21 | 2021-06-24 | 66 | Analista Tester |
| 69 | 1.6.2 | Diseñar casos de prueba aplicación Inspector Digital MT | 3d | 2021-06-24 | 2021-06-29 | 68 | Analista Tester |
| 70 | 1.6.3 | Diseñar casos de prueba módulos | 3d | 2021-06-29 | 2021-07-02 | 69 | Analista Tester |
| 71 | 1.6.4 | Diseñar casos de prueba ReportMng | 3d | 2021-07-02 | 2021-07-07 | 70 | Analista Tester |
| 72 | 1.6.5 | Diseñar casos de prueba seguridad | 3d | 2021-07-07 | 2021-07-12 | 71 | Analista Tester |
| 73 | 1.6.6 | Diseñar casos de prueba regresión e integración | 3d | 2021-07-12 | 2021-07-15 | 72 | Analista Tester |
| 74 | 1.6.7 | Análisis y review de resultados obtenidos de burbuja testing | 5d | 2021-07-15 | 2021-07-22 | 68, 69, 70, 71, 72, 73 | Analista Tester |
| 75 | 1.6.8 | Resolución de bugs | 10d | 2021-07-22 | 2021-08-05 | 74 | Desarrollador Jr 1; Desarrolladora Sr |

| ID | WBS | Task | Type | Duration | Start | Finish | Predecessors | Resources |
| --- | --- | --- | --- | --- | --- | --- | --- | --- |
| 76 | 1.7 | **Implementación y Despliegue** |  | 36d | 2021-06-21 | 2021-08-10 |  |  |
| 77 | 1.7.1 | Escribir manual de usuario |  | 5d | 2021-06-21 | 2021-06-28 | 66 | Desarrollador Jr 2 |
| 78 | 1.7.2 | Entregar manual de usuario |  | 1d | 2021-06-28 | 2021-06-29 | 77 | Analista Funcional |
| 79 | 1.7.3 | Entrega de app y módulos para generación de imagen máster de instalación en netbook |  | 1d | 2021-08-05 | 2021-08-06 | 75 | Arquitecto de SW |
| 80 | 1.7.4 | Entrega de módulo reporting y sincronización para instalación en servidor del MTySS |  | 1d | 2021-08-05 | 2021-08-06 | 75 | Arquitecto de SW |
| 81 | 1.7.5 | Capacitar personal |  | 5d | 2021-06-29 | 2021-07-06 | 78 | Analista Funcional |
| 82 | 1.7.6 | Salida a producción |  | 2d | 2021-08-06 | 2021-08-10 | 79, 80, 81 | Project Manager |
| 83 | 1.8 | **Finalizacion Proyecto** |  | 32d | 2021-08-10 | 2021-09-23 |  |  |
| 84 | 1.8.1 | Entregar documentación técnica |  | 1d | 2021-08-10 | 2021-08-11 | 82 | Project Manager |
| 85 | 1.8.2 | Seguimiento y soporte producción |  | 30d | 2021-08-11 | 2021-09-22 | 84 | Project Manager |
| 86 | 1.8.3 | Cierre de proyecto | milestone | 1d | 2021-09-22 | 2021-09-23 | 3, 9, 14, 19, 67, 76, 84, 85 | Project Manager |

Notes:
- 86: Finalización del Proyecto
